# 硅酸铝钠&长石1:1复配

How a schedule from a web Gantt chart changed from version to version. A marks actual dates.

## Version 1 (saved 2024-07-02)

| ID | WBS | Task | Duration | Start | Finish |
| --- | --- | --- | --- | --- | --- |
| 2 | 1 | **硅酸铝钠&长石1:1工艺稳定性验证** | 1d | 2024-07-03 | 2024-07-03 |
| 3 | 1.1 | **硅酸铝钠&长石1:1样块烧结** | 1d | 2024-07-03 | 2024-07-03 |
| 4 |  | 硅酸铝钠&长石1:1样块920℃烧结 | 1d | 2024-07-03 | 2024-07-03 |
| 5 |  | 硅酸铝钠&长石1:1样块930℃烧结 | 1d | 2024-07-03 | 2024-07-03 |
| 6 |  | 硅酸铝钠&长石1:1样块改性 | 1d | 2024-07-03 | 2024-07-03 |
| 7 | 1.3 | **硅酸铝钠&长石1:1树脂渗透** | 1d | 2024-07-03 | 2024-07-03 |
| 8 |  | 硅酸铝钠&长石1:1样块3:4:3树脂渗透 | 1d | 2024-07-03 | 2024-07-03 |
| 9 |  | 硅酸铝钠&长石1:1样块3:4:3树脂渗透 | 1d | 2024-07-03 | 2024-07-03 |
| 10 |  | 硅酸铝钠&长石1:1样块固化 | 1d | 2024-07-03 | 2024-07-03 |

## Version 2 (saved 2024-07-02)

Last finish 2024-07-03 → 2024-07-16 (+13d). Complete tasks 0 → 10.

Added:

| ID | Task | Duration | Start | Finish |
| --- | --- | --- | --- | --- |
| 2 | **★硅酸铝钠&长石1:1工艺稳定性提升** | 10d | 2024-06-20 | 2024-07-01 |
| 9 | 硅酸铝钠&长石1:1样块6:4树脂渗透 | 7d | 2024-06-24 | 2024-07-01 |
| 11 | **★硅酸铝钠&长石1:1硬度提升** | 19d | 2024-06-20 | 2024-07-11 |
| 12 | **硅:长1:1+增强剂的样块烧结** | 10d | 2024-06-20 | 2024-07-01 |
| 13 | 硅:长1:1+5%CaCO3晶须(900/920℃) | 2d | 2024-06-20 | 2024-06-21 |
| 14 | 硅:长1:1+5%CaCO3长须(900/920℃) | 2d | 2024-06-20 | 2024-06-21 |
| 15 | 硅:长1:1+5%CaSO4晶须(900/920℃) | 2d | 2024-06-20 | 2024-06-21 |
| 16 | 硅:长1:1+5%MgO粉体(900/920℃) | 2d | 2024-06-20 | 2024-06-21 |
| 17 | 硅:长1:1+5%Ca3(PO4)2粉体(900/920℃) | 2d | 2024-06-24 | 2024-06-25 |
| 18 | 硅:长1:1+5%HAP粉体(900/920℃) | 2d | 2024-06-24 | 2024-06-25 |
| 19 | 硅:长1:1+10%CaCO3晶须(900/920℃) | 2d | 2024-06-29 | 2024-07-01 |
| 20 | 硅:长1:1+5%La2O3粉体(900/920℃) | 2d | 2024-06-29 | 2024-07-01 |
| 21 | 硅:长1:1+2%La2O3粉体(900/920℃) | 2d | 2024-06-29 | 2024-07-01 |
| 22 | 硅酸铝钠&长石1:1+增强剂样块改性 | 2d | 2024-07-01 | 2024-07-02 |
| 23 | 硅酸铝钠&长石1:1+增强剂样块渗透 | 8d | 2024-07-02 | 2024-07-10 |
| 24 | 硅酸铝钠&长石1:1+增强剂样块固化 | 2d | 2024-07-10 | 2024-07-11 |
| 25 | **★原料配比合成硅酸铝钠** | 11d | 2024-07-04 | 2024-07-16 |
| 26 | **原料配比合成硅酸铝钠成分样块烧结** | 3d | 2024-07-04 | 2024-07-06 |
| 27 | 石英+硅酸铝钠(900/950/1000℃） | 3d | 2024-07-04 | 2024-07-06 |
| 28 | 石英+冰晶石+氧化铝(900/950/1000℃） | 3d | 2024-07-04 | 2024-07-06 |
| 29 | 石英+氧化铝+碳酸钠(900/950/1000℃） | 3d | 2024-07-04 | 2024-07-06 |
| 30 | 原料配比合成硅酸铝钠成分样块改性 | 3d | 2024-07-05 | 2024-07-08 |
| 31 | 原料配比合成硅酸铝钠成分样块树脂渗透 | 8d | 2024-07-08 | 2024-07-16 |
| 32 | 原料配比合成硅酸铝钠成分样块固化 | 3d | 2024-07-12 | 2024-07-15 |

Removed: 2 硅酸铝钠&长石1:1工艺稳定性验证; 9 硅酸铝钠&长石1:1样块3:4:3树脂渗透

Changed:

| ID | Task | Start | Finish | Duration | Complete |
| --- | --- | --- | --- | --- | --- |
| 3 | **硅酸铝钠&长石1:1样块烧结** | 2024-07-03 → 2024-06-20 (-13d) | 2024-07-03 → 2024-06-22 (-11d) | 1d → 3d | 0% → 100% |
| 4 | 硅酸铝钠&长石1:1样块920℃烧结 | 2024-07-03 → 2024-06-20 (-13d) | 2024-07-03 → 2024-06-21 (-12d) | 1d → 2d | 0% → 100% |
| 5 | 硅酸铝钠&长石1:1样块930℃烧结 | 2024-07-03 → 2024-06-21 (-12d) | 2024-07-03 → 2024-06-22 (-11d) | 1d → 2d | 0% → 100% |
| 6 | 硅酸铝钠&长石1:1样块改性 | 2024-07-03 → 2024-06-24 (-9d) | 2024-07-03 → 2024-06-25 (-8d) | 1d → 2d | 0% → 100% |
| 7 | **硅酸铝钠&长石1:1树脂渗透** | 2024-07-03 → 2024-06-24 (-9d) | 2024-07-03 → 2024-07-01 (-2d) | 1d → 7d | 0% → 100% |
| 8 | 硅酸铝钠&长石1:1样块3:4:3树脂渗透 | 2024-07-03 → 2024-06-24 (-9d) | 2024-07-03 → 2024-07-01 (-2d) | 1d → 7d | 0% → 100% |
| 10 | 硅酸铝钠&长石1:1样块固化 | 2024-07-03 → 2024-07-01 (-2d) | 2024-07-03 → 2024-07-01 (-2d) |  | 0% → 100% |

## Version 3 (saved 2024-07-03)

Last finish stays 2024-07-16. Complete tasks 10 → 16.

Changed:

| ID | Task | Finish | Duration | Complete |
| --- | --- | --- | --- | --- |
| 2 | **★硅酸铝钠&长石1:1工艺稳定性提升** | 2024-07-01 → 2024-07-02 (+1d) | 10d → 11d |  |
| 10 | 硅酸铝钠&长石1:1样块固化 | 2024-07-01 → 2024-07-02 (+1d) | 1d → 2d |  |
| 11 | **★硅酸铝钠&长石1:1硬度提升** |  |  | 52% → 73% |
| 12 | **硅:长1:1+增强剂的样块烧结** |  |  | 72% → 100% |
| 17 | 硅:长1:1+5%Ca3(PO4)2粉体(900/920℃) |  |  | 50% → 100% |
| 18 | 硅:长1:1+5%HAP粉体(900/920℃) |  |  | 50% → 100% |
| 19 | 硅:长1:1+10%CaCO3晶须(900/920℃) |  |  | 50% → 100% |
| 20 | 硅:长1:1+5%La2O3粉体(900/920℃) |  |  | 50% → 100% |
| 21 | 硅:长1:1+2%La2O3粉体(900/920℃) |  |  | 50% → 100% |
| 22 | 硅酸铝钠&长石1:1+增强剂样块改性 |  |  | 50% → 100% |
| 23 | 硅酸铝钠&长石1:1+增强剂样块渗透 |  |  | 20% → 25% |

## Version 4 (saved 2024-07-04)

Last finish stays 2024-07-16.

Changed:

| ID | Task | Complete |
| --- | --- | --- |
| 11 | **★硅酸铝钠&长石1:1硬度提升** | 73% → 75% |
| 23 | 硅酸铝钠&长石1:1+增强剂样块渗透 | 25% → 30% |
| 25 | **★原料配比合成硅酸铝钠** | 0% → 4% |
| 26 | **原料配比合成硅酸铝钠成分样块烧结** | 0% → 10% |
| 27 | 石英+硅酸铝钠(900/950/1000℃） | 0% → 10% |
| 28 | 石英+冰晶石+氧化铝(900/950/1000℃） | 0% → 10% |
| 29 | 石英+氧化铝+碳酸钠(900/950/1000℃） | 0% → 10% |

## Version 5 (saved 2024-07-05)

Last finish stays 2024-07-16.

Changed:

| ID | Task | Complete |
| --- | --- | --- |
| 25 | **★原料配比合成硅酸铝钠** | 4% → 6% |
| 26 | **原料配比合成硅酸铝钠成分样块烧结** | 10% → 15% |
| 28 | 石英+冰晶石+氧化铝(900/950/1000℃） | 10% → 25% |
| 29 | 石英+氧化铝+碳酸钠(900/950/1000℃） | 10% → 25% |
